# Pronexe Project

How a schedule from MS Project changed from version to version. A marks actual dates.

## Version 1 (saved 2020-04-16, file Proyecto_planificacion.mpp)

Note of the change: gpr2

| ID | WBS | Task | Duration | Start | Finish | Predecessors | Total float | Constraint |
| --- | --- | --- | --- | --- | --- | --- | --- | --- |
| 1 | 1 | **PRONEXE** | 54.51d | 2020-03-17 09:00 | 2020-06-02 12:48 |  | 0d |  |
| 2 | 1.1 | **Análisis** | 21.67d | 2020-03-17 09:00 | 2020-04-15 14:00 |  | 2.53d |  |
| 3 | 1.1.1 | **Elicitación de requisitos** | 2.8d | 2020-03-17 09:00 | 2020-03-19 15:00 |  | 2.53d |  |
| 4 |  | Encuestas exploratorias | 5h | 2020-03-17 09:00 | 2020-03-17 14:00 |  | 2.53d |  |
| 5 |  | Obtener conclusiones | 5h | 2020-03-17 14:00 | 2020-03-18 11:30 | 4 | 2.53d |  |
| 6 |  | Valorar los posibles costes y beneficios | 11h | 2020-03-18 11:30 | 2020-03-19 15:00 | 5 | 2.6d |  |
| 7 |  | Documento de alcance | 0h | 2020-03-19 15:00 | 2020-03-19 15:00 | 6 | 2.93d |  |
| 8 | 1.1.2 | **Análisis de requisitos** | 5.27d | 2020-03-19 15:00 | 2020-03-27 09:30 |  | 2.13d |  |
| 9 |  | Storyboards | 5h | 2020-03-19 15:00 | 2020-03-20 12:30 | 7 | 2.6d |  |
| 10 |  | Casos de uso | 4h | 2020-03-20 12:30 | 2020-03-23 12:30 | 9 | 2.6d |  |
| 11 |  | Diagrama UML | 3h | 2020-03-23 12:30 | 2020-03-24 11:30 | 10 | 2.13d |  |
| 12 |  | Prototipo inicial | 14.5h | 2020-03-24 11:30 | 2020-03-27 09:30 | 11 | 2.13d |  |
| 13 |  | Modelos y diagramas de análisis | 0h | 2020-03-27 09:30 | 2020-03-27 09:30 | 12 | 2.27d |  |
| 14 | 1.1.3 | **Validación** | 13.6d | 2020-03-27 09:30 | 2020-04-15 14:00 |  | 2.13d |  |
| 15 |  | Pruebas del prototipo | 10.5h | 2020-03-27 09:30 | 2020-03-30 12:30 | 13 | 2.13d |  |
| 16 |  | Consulta a expertos | 6.5h | 2020-03-30 12:30 | 2020-04-01 11:00 | 15 | 2.13d |  |
| 17 | 1.1.3.3 | **Reuniones con interesados** | 12.2d | 2020-03-30 12:30 | 2020-04-15 14:00 |  | 32.84d |  |
| 18 |  | Reuniones con interesados 1 | 5h | 2020-03-30 12:30 | 2020-03-31 10:00 | 15 | 42.37d | finish no earlier than 2020-03-24 16:30 |
| 19 |  | Reuniones con interesados 2 | 5h | 2020-04-01 09:00 | 2020-04-01 14:00 | 18 | 41.51d | start no earlier than 2020-04-01 08:00 |
| 20 |  | Reuniones con interesados 3 | 5h | 2020-04-08 09:00 | 2020-04-08 14:00 | 19 | 37.17d | start no earlier than 2020-04-08 08:00 |
| 21 |  | Reuniones con interesados 4 | 5h | 2020-04-15 09:00 | 2020-04-15 14:00 | 20 | 32.84d | start no earlier than 2020-04-15 08:00 |
| 22 | 1.1.3.4 | **Reuniones del equipo de desarrollo** | 11.87d | 2020-03-30 12:30 | 2020-04-15 11:30 |  | 33.17d |  |
| 23 |  | Reuniones del equipo de desarrollo 1 | 2.5h | 2020-03-30 12:30 | 2020-03-30 15:00 | 15 | 43.71d | start no earlier than 2020-03-24 09:00 |
| 24 |  | Reuniones del equipo de desarrollo 2 | 2.5h | 2020-04-01 09:00 | 2020-04-01 11:30 | 23 | 42.51d | start no earlier than 2020-04-01 09:00 |
| 25 |  | Reuniones del equipo de desarrollo 3 | 2.5h | 2020-04-08 09:00 | 2020-04-08 11:30 | 24 | 37.84d | start no earlier than 2020-04-08 09:00 |
| 26 |  | Reuniones del equipo de desarrollo 4 | 2.5h | 2020-04-15 09:00 | 2020-04-15 11:30 | 25 | 33.17d | start no earlier than 2020-04-15 09:00 |
| 27 |  | Resumen de las pruebas y reuniones | 0h | 2020-04-15 11:30 | 2020-04-15 11:30 | 22 | 36.33d |  |
| 28 | 1.2 | **Diseño** | 5.87d | 2020-04-01 11:00 | 2020-04-09 10:00 |  | 2.13d |  |
| 29 | 1.2.1 | **Capa de presentacion o frontend** | 3.73d | 2020-04-01 11:00 | 2020-04-06 16:30 |  | 2.13d |  |
| 30 |  | Vista del cliente | 14h | 2020-04-01 11:00 | 2020-04-03 10:00 | 16 | 4d |  |
| 31 |  | Vista del profesional | 14h | 2020-04-01 11:00 | 2020-04-03 10:00 | 16 | 4d |  |
| 32 |  | Vista del empleado | 28h | 2020-04-01 11:00 | 2020-04-06 16:30 | 16 | 2.13d |  |
| 33 |  | Versión web | 10h | 2020-04-01 11:00 | 2020-04-03 13:00 | 16 | 3.13d |  |
| 34 |  | Diseño de la capa de presentación | 0h | 2020-04-06 16:30 | 2020-04-06 16:30 | 30, 31, 32, 33 | 2.47d |  |
| 35 | 1.2.2 | **Capa lógica** | 0.8d | 2020-04-08 11:30 | 2020-04-09 10:00 |  | 2.13d |  |
| 36 |  | Revisión del diagrama UML | 1h | 2020-04-08 11:30 | 2020-04-08 12:30 | 34, 45 | 2.67d |  |
| 37 |  | Establecimiento de librerias | 1h | 2020-04-08 12:30 | 2020-04-09 09:30 | 36 | 2.2d |  |
| 38 |  | Comunicacion con la capa de persistencia | 6h | 2020-04-08 11:30 | 2020-04-09 10:00 | 34, 45 | 2.13d |  |
| 39 |  | Diseño de la capa lógica | 0h | 2020-04-09 10:00 | 2020-04-09 10:00 | 36, 37, 38 | 2.27d |  |
| 40 | 1.2.3 | **Capa de persistencia** | 1.33d | 2020-04-07 09:00 | 2020-04-08 11:30 | 34 | 2.13d |  |
| 41 |  | Diseño de las tablas y relaciones | 6h | 2020-04-07 09:00 | 2020-04-07 15:00 | 16 | 2.67d |  |
| 42 |  | Establecimiento de usuarios y permisos | 1h | 2020-04-07 09:00 | 2020-04-07 10:00 | 16 | 3.33d |  |
| 43 |  | Diseño de la base de datos | 10h | 2020-04-07 09:00 | 2020-04-08 11:30 | 16 | 2.13d |  |
| 44 |  | Comunicación con la capa lógica | 5h | 2020-04-07 09:00 | 2020-04-07 14:00 | 16 | 2.8d |  |
| 45 |  | Diseño de la capa de persistencia | 0h | 2020-04-08 11:30 | 2020-04-08 11:30 | 41, 42, 43, 44 | 2.2d |  |
| 46 | 1.3 | **Implementación** | 20.97d | 2020-04-09 10:00 | 2020-05-11 09:48 |  | 0d |  |
| 47 | 1.3.1 | **Capa de presentación** | 8.27d | 2020-04-09 10:00 | 2020-04-21 12:00 |  | 2.13d |  |
| 48 |  | Interfaz gráfica de la aplicación | 14h | 2020-04-09 10:00 | 2020-04-10 16:30 | 39 | 8.53d |  |
| 49 |  | Interfaz versión web | 49h | 2020-04-09 10:00 | 2020-04-21 12:00 | 39 | 2.13d |  |
| 50 |  | Implementar la conexión con la capa lógica | 20h | 2020-04-13 09:00 | 2020-04-15 14:00 | 39 | 5.87d |  |
| 51 |  | Implementación de la capa de presentación | 0h | 2020-04-21 12:00 | 2020-04-21 12:00 | 48, 49, 50 | 2.13d |  |
| 52 | 1.3.2 | **Capa de lógica** | 9.47d | 2020-04-21 12:00 | 2020-05-05 15:30 | 51 | 0.13d |  |
| 53 |  | Acceso a la capa de persistencia | 30.5h | 2020-04-21 12:00 | 2020-04-28 12:00 | 39 | 4.6d |  |
| 54 |  | Implementar el diagrama UML | 30h | 2020-04-24 09:30 | 2020-05-05 15:30 | 39 | 0.13d |  |
| 55 |  | Contruir servicios web | 56h | 2020-04-21 12:00 | 2020-04-30 15:30 | 39 | 2.13d |  |
| 56 |  | Implementación de la capa lógica | 0h | 2020-05-05 15:30 | 2020-05-05 15:30 | 53, 54, 55 | 0.33d |  |
| 57 | 1.3.3 | **Capa de persistencia** | 3.24d | 2020-05-05 15:30 | 2020-05-11 09:48 | 56 | 0d |  |
| 58 |  | Estructura de datos | 20h | 2020-05-05 15:30 | 2020-05-08 13:00 | 39 | 0.57d |  |
| 59 |  | Lógica de los datos | 20.8h | 2020-05-05 15:30 | 2020-05-11 09:48 | 39 | 0d |  |
| 60 |  | Implementación de la capa de persistencia | 0h | 2020-05-11 09:48 | 2020-05-11 09:48 | 58, 59 | 0d |  |
| 61 | 1.4 | **Verificación y pruebas** | 11d | 2020-05-11 09:48 | 2020-05-26 09:48 |  | 0d |  |
| 62 | 1.4.1 | **Pruebas funcionales** | 1.67d | 2020-05-11 09:48 | 2020-05-12 14:48 |  | 0d |  |
| 63 |  | Pruebas unitarias | 12.5h | 2020-05-11 09:48 | 2020-05-12 14:48 | 51, 56, 60 | 0d |  |
| 64 |  | Acta de aprobación | 0h | 2020-05-12 14:48 | 2020-05-12 14:48 | 63 | 0d |  |
| 65 | 1.4.2 | **Pruebas de integración** | 4.73d | 2020-05-12 14:48 | 2020-05-19 12:48 |  | 0d |  |
| 66 |  | Pruebas de aplicación | 17.75h | 2020-05-12 14:48 | 2020-05-15 10:03 | 64 | 0d |  |
| 67 |  | Pruebas de web | 17.75h | 2020-05-15 10:03 | 2020-05-19 12:48 | 66 | 0d |  |
| 68 |  | Acta de aprobación | 0h | 2020-05-19 12:48 | 2020-05-19 12:48 | 66, 67 | 0d |  |
| 69 | 1.4.3 | **Pruebas de aceptación** | 1.43d | 2020-05-19 12:48 | 2020-05-20 16:03 |  | 0d |  |
| 70 |  | Pruebas del departamento de calidad | 10.75h | 2020-05-19 12:48 | 2020-05-20 16:03 | 68 | 0d |  |

| ID | WBS | Task | Duration | Start | Finish | Predecessors | Total float | Constraint |
| --- | --- | --- | --- | --- | --- | --- | --- | --- |
| 71 |  | Acta de aprobación | 0h | 2020-05-20 16:03 | 2020-05-20 16:03 | 70 | 3.57d |  |
| 72 | 1.4.4 | **Pruebas de estrés** | 3.17d | 2020-05-20 16:03 | 2020-05-26 09:48 |  | 0d |  |
| 73 |  | Base de datos | 6h | 2020-05-20 16:03 | 2020-05-21 14:33 | 70 | 0d |  |
| 74 |  | Acceso al servidor | 5.38h | 2020-05-21 14:33 | 2020-05-22 12:25 | 73 | 0d |  |
| 75 |  | Acceso a la web | 8.88h | 2020-05-22 12:25 | 2020-05-26 09:48 | 74 | 0d |  |
| 76 |  | Acta de aprobación | 0h | 2020-05-26 09:48 | 2020-05-26 09:48 | 73, 74, 75 | 0d |  |
| 77 | 1.5 | **Despliegue e implantación** | 36.51d | 2020-04-10 09:00 | 2020-06-02 12:48 |  | 0d |  |
| 78 | 1.5.1 | **Base de datos** | 0.67d | 2020-05-26 09:48 | 2020-05-26 14:48 |  | 0d |  |
| 79 |  | Poblar con datos | 5h | 2020-05-26 09:48 | 2020-05-26 14:48 | 71, 76 | 0d |  |
| 80 |  | Base de datos operativa | 0h | 2020-05-26 14:48 | 2020-05-26 14:48 | 79 | 0d |  |
| 81 | 1.5.2 | **Servidor web** | 1.73d | 2020-05-26 14:48 | 2020-05-28 12:48 |  | 0d |  |
| 82 |  | Implementación de servidores | 10h | 2020-05-26 14:48 | 2020-05-28 09:48 | 80 | 0d |  |
| 83 |  | Comprar dominio | 1h | 2020-05-27 09:00 | 2020-05-27 10:00 | 80 | 1.37d |  |
| 84 |  | Conexión con servicios de estadísticas | 3h | 2020-05-28 09:48 | 2020-05-28 12:48 | 82 | 0d |  |
| 85 |  | Servidor web operativo | 0h | 2020-05-28 12:48 | 2020-05-28 12:48 | 82, 83, 84 | 0d |  |
| 86 | 1.5.3 | **Aplicación** | 2.73d | 2020-05-28 12:48 | 2020-06-02 10:48 |  | 0d |  |
| 87 |  | Detección de dependencias | 5h | 2020-05-28 12:48 | 2020-05-29 10:18 | 85 | 0d |  |
| 88 |  | Creación de contenedores | 10h | 2020-05-29 10:18 | 2020-06-01 12:48 | 87 | 0d |  |
| 89 |  | Despliegue de contenedores | 2h | 2020-06-01 12:48 | 2020-06-02 10:48 | 88 | 0d |  |
| 90 |  | Aplicación desplegada | 0h | 2020-06-02 10:48 | 2020-06-02 10:48 | 87, 88, 89 | 0d |  |
| 91 | 1.5.4 | **Mantenimiento** | 36.51d | 2020-04-10 09:00 | 2020-06-02 12:48 |  | 0d |  |
| 92 | 1.5.4.1 | **Actualizaciones** | 14.5d | 2020-04-10 09:00 | 2020-04-30 12:45 |  | 21.67d |  |
| 93 |  | Actualizaciones 1 | 3.75h | 2020-04-10 09:00 | 2020-04-10 12:45 | 39 | 34.17d | start no earlier than 2020-04-10 09:00 |
| 94 |  | Actualizaciones 2 | 3.75h | 2020-04-17 09:00 | 2020-04-17 12:45 | 93 | 29.67d | start no earlier than 2020-04-17 09:00 |
| 95 |  | Actualizaciones 3 | 3.75h | 2020-04-23 09:00 | 2020-04-23 12:45 | 94 | 26.17d | start no earlier than 2020-04-23 09:00 |
| 96 |  | Actualizaciones 4 | 3.75h | 2020-04-30 09:00 | 2020-04-30 12:45 | 95 | 21.67d | start no earlier than 2020-04-30 09:00 |
| 97 | 1.5.4.2 | **Reuniones del equipo de desarrollo** | 14.33d | 2020-04-10 12:45 | 2020-04-30 15:15 |  | 21.67d |  |
| 98 |  | Reuniones del equipo de desarrollo 1 | 2.5h | 2020-04-10 12:45 | 2020-04-10 15:15 | 93 | 35.67d | start no earlier than 2020-03-31 09:00 |
| 99 |  | Reuniones del equipo de desarrollo 2 | 2.5h | 2020-04-17 12:45 | 2020-04-17 15:15 | 94 | 30.67d | start no earlier than 2020-04-15 09:00 |
| 100 |  | Reuniones del equipo de desarrollo 3 | 2.5h | 2020-04-23 12:45 | 2020-04-23 15:15 | 95 | 26.67d | start no earlier than 2020-04-22 09:00 |
| 101 |  | Reuniones del equipo de desarrollo 4 | 2.5h | 2020-04-30 12:45 | 2020-04-30 15:15 | 96 | 21.67d | start no earlier than 2020-04-29 09:00 |
| 102 |  | Gestion de control | 2h | 2020-06-02 10:48 | 2020-06-02 12:48 | 90 | 0d |  |
| 103 |  | Resumen de las reuniones, controles y actualizaciones | 0h | 2020-06-02 12:48 | 2020-06-02 12:48 | 101, 102 | 0d |  |

## Version 2 (saved 2020-05-25, file Proyecto_Seguimiento.mpp)

Note of the change: gpr2

Last finish 2020-06-02 → 2020-05-19 (-14d). Complete tasks 0 → 36.

Added:

| ID | Task | Duration | Start | Finish | Predecessors | Constraint | Resources |
| --- | --- | --- | --- | --- | --- | --- | --- |
| 22 | Reuniones con interesados 5 | 5h | 2020-04-24 A | 2020-04-24 A | 21 | start no earlier than 2020-04-24 | jefe_de_proyecto |
| 28 | Reuniones del equipo de desarrollo 5 | 5h | 2020-04-24 A | 2020-04-27 A | 22 | start no earlier than 2020-04-24 | jefe_de_proyecto |

Removed: 92 Actualizaciones; 93 Actualizaciones 1; 94 Actualizaciones 2; 95 Actualizaciones 3; 96 Actualizaciones 4; 97 Reuniones del equipo de desarrollo; 98 Reuniones del equipo de desarrollo 1; 99 Reuniones del equipo de desarrollo 2; 100 Reuniones del equipo de desarrollo 3; 101 Reuniones del equipo de desarrollo 4

Changed:

| ID | Task | Start | Finish | Duration | Complete | Total float | Predecessors | Other |
| --- | --- | --- | --- | --- | --- | --- | --- | --- |
| 1 | **PRONEXE** | 2020-03-17 09:00 → 2020-03-17 A | 2020-06-02 12:48 → 2020-05-19 (-14d) | 54.51d → 45d | 0% → 50% |  |  | baseline start none → 2020-03-17; baseline finish none → 2020-05-14 |
| 2 | **Análisis** | 2020-03-17 09:00 → 2020-03-17 A | 2020-04-15 14:00 → 2020-04-27 A (+12d) | 21.67d → 29.33d | 0% → 100% | 2.53d → none |  | baseline start none → 2020-03-17; baseline finish none → 2020-04-27 |
| 3 | **Elicitación de requisitos** | 2020-03-17 09:00 → 2020-03-17 A | 2020-03-19 15:00 → 2020-03-19 A |  | 0% → 100% | 2.53d → none |  | baseline start none → 2020-03-17; baseline finish none → 2020-03-19 |
| 4 | Encuestas exploratorias | 2020-03-17 09:00 → 2020-03-17 A | 2020-03-17 14:00 → 2020-03-17 A |  | 0% → 100% | 2.53d → none |  | baseline start none → 2020-03-17; baseline finish none → 2020-03-17 |
| 5 | Obtener conclusiones | 2020-03-17 14:00 → 2020-03-17 A | 2020-03-18 11:30 → 2020-03-18 A |  | 0% → 100% | 2.53d → none |  | baseline start none → 2020-03-17; baseline finish none → 2020-03-18 |
| 6 | Valorar los posibles costes y beneficios | 2020-03-18 11:30 → 2020-03-18 A | 2020-03-19 15:00 → 2020-03-19 A |  | 0% → 100% | 2.6d → none |  | baseline start none → 2020-03-18; baseline finish none → 2020-03-19 |
| 7 | Documento de alcance | 2020-03-19 15:00 → 2020-03-19 A | 2020-03-19 15:00 → 2020-03-19 A |  | 0% → 100% | 2.93d → none |  | baseline start none → 2020-03-19; baseline finish none → 2020-03-19 |
| 8 | **Análisis de requisitos** | 2020-03-19 15:00 → 2020-03-19 A | 2020-03-27 09:30 → 2020-03-27 A | 5.27d → 5.33d | 0% → 100% | 2.13d → none |  | baseline start none → 2020-03-19; baseline finish none → 2020-03-27 |
| 9 | Storyboards | 2020-03-19 15:00 → 2020-03-19 A | 2020-03-20 12:30 → 2020-03-20 A | 5h → 6.5h | 0% → 100% | 2.6d → none |  | baseline start none → 2020-03-19; baseline finish none → 2020-03-20 |
| 10 | Casos de uso | 2020-03-20 12:30 → 2020-03-23 A (+3d) | 2020-03-23 12:30 → 2020-03-23 A |  | 0% → 100% | 2.6d → none |  | baseline start none → 2020-03-20; baseline finish none → 2020-03-23 |
| 11 | Diagrama UML | 2020-03-23 12:30 → 2020-03-24 A (+1d) | 2020-03-24 11:30 → 2020-03-24 A |  | 0% → 100% | 2.13d → none |  | baseline start none → 2020-03-23; baseline finish none → 2020-03-24 |
| 12 | Prototipo inicial | 2020-03-24 11:30 → 2020-03-24 A | 2020-03-27 09:30 → 2020-03-27 A | 14.5h → 15h | 0% → 100% | 2.13d → none |  | baseline start none → 2020-03-24; baseline finish none → 2020-03-27 |
| 13 | Modelos y diagramas de análisis | 2020-03-27 09:30 → 2020-03-27 A | 2020-03-27 09:30 → 2020-03-27 A |  | 0% → 100% | 2.27d → none |  | baseline start none → 2020-03-27; baseline finish none → 2020-03-27 |
| 14 | **Validación** | 2020-03-27 09:30 → 2020-03-27 A | 2020-04-15 14:00 → 2020-04-27 A (+12d) | 13.6d → 21.2d | 0% → 100% | 2.13d → none |  | baseline start none → 2020-03-27; baseline finish none → 2020-04-27 |
| 15 | Pruebas del prototipo | 2020-03-27 09:30 → 2020-03-27 A | 2020-03-30 12:30 → 2020-03-30 A |  | 0% → 100% | 2.13d → none | 13 → 8 | baseline start none → 2020-03-27; baseline finish none → 2020-03-30 |
| 16 | Consulta a expertos | 2020-03-30 12:30 → 2020-03-30 A | 2020-04-01 11:00 → 2020-03-31 A (-1d) |  | 0% → 100% | 2.13d → none |  | resources analista2 → analista2; analista1; baseline start none → 2020-03-30; baseline finish none → 2020-03-31 |
| 17 | **Reuniones con interesados** | 2020-03-30 12:30 → 2020-03-30 A | 2020-04-15 14:00 → 2020-04-24 A (+9d) | 12.2d → 19.13d | 0% → 100% | 32.84d → none |  | baseline start none → 2020-03-30; baseline finish none → 2020-04-24 |
| 18 | Reuniones con interesados 1 | 2020-03-30 12:30 → 2020-03-30 A | 2020-03-31 10:00 → 2020-04-01 A (+1d) | 5h → 15h | 0% → 100% | 42.37d → none |  | constraint finish no earlier than 2020-03-24 16:30 → finish no earlier than 2020-03-24; resources none → jefe_de_proyecto; baseline start none → 2020-03-30; baseline finish none → 2020-04-01 |
| 19 | Reuniones con interesados 2 | 2020-04-01 09:00 → 2020-04-06 A (+5d) | 2020-04-01 14:00 → 2020-04-07 A (+6d) | 5h → 15h | 0% → 100% | 41.51d → none |  | constraint start no earlier than 2020-04-01 08:00 → start no earlier than 2020-04-06; resources none → jefe_de_proyecto; baseline start none → 2020-04-06; baseline finish none → 2020-04-07 |
| 20 | Reuniones con interesados 3 | 2020-04-08 09:00 → 2020-04-13 A (+5d) | 2020-04-08 14:00 → 2020-04-14 A (+6d) | 5h → 15h | 0% → 100% | 37.17d → none |  | constraint start no earlier than 2020-04-08 08:00 → start no earlier than 2020-04-13; resources none → jefe_de_proyecto; baseline start none → 2020-04-13; baseline finish none → 2020-04-14 |
| 21 | Reuniones con interesados 4 | 2020-04-15 09:00 → 2020-04-20 A (+5d) | 2020-04-15 14:00 → 2020-04-21 A (+6d) | 5h → 15h | 0% → 100% | 32.84d → none |  | constraint start no earlier than 2020-04-15 08:00 → start no earlier than 2020-04-20; resources none → jefe_de_proyecto; baseline start none → 2020-04-20; baseline finish none → 2020-04-21 |
| 23 | **Reuniones del equipo de desarrollo** | 2020-03-30 12:30 → 2020-04-01 A (+2d) | 2020-04-15 11:30 → 2020-04-27 A (+12d) | 11.87d → 17.8d | 0% → 100% | 33.17d → none |  | baseline start none → 2020-04-01; baseline finish none → 2020-04-27 |
| 24 | Reuniones del equipo de desarrollo 1 | 2020-03-30 12:30 → 2020-04-01 A (+2d) | 2020-03-30 15:00 → 2020-04-02 A (+3d) | 2.5h → 7.5h | 0% → 100% | 43.71d → none | 15 → 18 | constraint start no earlier than 2020-03-24 09:00 → start no earlier than 2020-03-31; resources none → jefe_de_proyecto; baseline start none → 2020-04-01; baseline finish none → 2020-04-02 |
| 25 | Reuniones del equipo de desarrollo 2 | 2020-04-01 09:00 → 2020-04-08 A (+7d) | 2020-04-01 11:30 → 2020-04-08 A (+7d) | 2.5h → 7.5h | 0% → 100% | 42.51d → none | 24 → 19 | constraint start no earlier than 2020-04-01 09:00 → start no earlier than 2020-04-07; resources none → jefe_de_proyecto; baseline start none → 2020-04-08; baseline finish none → 2020-04-08 |
| 26 | Reuniones del equipo de desarrollo 3 | 2020-04-08 09:00 → 2020-04-15 A (+7d) | 2020-04-08 11:30 → 2020-04-15 A (+7d) | 2.5h → 7.5h | 0% → 100% | 37.84d → none | 25 → 20 | constraint start no earlier than 2020-04-08 09:00 → start no earlier than 2020-04-14; resources none → jefe_de_proyecto; baseline start none → 2020-04-15; baseline finish none → 2020-04-15 |
| 27 | Reuniones del equipo de desarrollo 4 | 2020-04-15 09:00 → 2020-04-22 A (+7d) | 2020-04-15 11:30 → 2020-04-22 A (+7d) | 2.5h → 7.5h | 0% → 100% | 33.17d → none | 26 → 21 | constraint start no earlier than 2020-04-15 09:00 → start no earlier than 2020-04-21; resources none → jefe_de_proyecto; baseline start none → 2020-04-22; baseline finish none → 2020-04-22 |
| 29 | Resumen de las pruebas y reuniones | 2020-04-15 11:30 → 2020-04-27 A (+12d) | 2020-04-15 11:30 → 2020-04-27 A (+12d) |  | 0% → 100% | 36.33d → none |  | baseline start none → 2020-04-27; baseline finish none → 2020-04-27 |
| 30 | **Diseño** | 2020-04-01 11:00 → 2020-03-31 A (-1d) | 2020-04-09 10:00 → 2020-04-08 A (-1d) | 5.87d → 6d | 0% → 100% | 2.13d → none |  | resources none → Adobe Illustrator; baseline start none → 2020-03-31; baseline finish none → 2020-04-07 |
| 31 | **Capa de presentacion o frontend** | 2020-04-01 11:00 → 2020-03-31 A (-1d) | 2020-04-06 16:30 → 2020-04-06 A | 3.73d → 3.6d | 0% → 100% | 2.13d → none |  | baseline start none → 2020-03-31; baseline finish none → 2020-04-03 |
| 32 | Vista del cliente | 2020-04-01 11:00 → 2020-03-31 A (-1d) | 2020-04-03 10:00 → 2020-04-02 A (-1d) |  | 0% → 100% | 4d → none |  | baseline start none → 2020-03-31; baseline finish none → 2020-04-02 |
| 33 | Vista del profesional | 2020-04-01 11:00 → 2020-03-31 A (-1d) | 2020-04-03 10:00 → 2020-04-02 A (-1d) |  | 0% → 100% | 4d → none |  | baseline start none → 2020-03-31; baseline finish none → 2020-04-02 |
| 34 | Vista del empleado | 2020-04-01 11:00 → 2020-03-31 A (-1d) | 2020-04-06 16:30 → 2020-04-02 A (-4d) | 28h → 14h | 0% → 100% | 2.13d → none |  | baseline start none → 2020-03-31; baseline finish none → 2020-04-02 |
| 35 | Versión web | 2020-04-01 11:00 → 2020-03-31 A (-1d) | 2020-04-03 13:00 → 2020-04-06 A (+3d) | 10h → 13h | 0% → 100% | 3.13d → none |  | baseline start none → 2020-03-31; baseline finish none → 2020-04-03 |
| 36 | Diseño de la capa de presentación | 2020-04-06 16:30 → 2020-04-06 A | 2020-04-06 16:30 → 2020-04-06 A |  | 0% → 100% | 2.47d → none |  | baseline start none → 2020-04-03; baseline finish none → 2020-04-03 |
| 37 | **Capa lógica** | 2020-04-08 11:30 → 2020-04-07 A (-1d) | 2020-04-09 10:00 → 2020-04-08 A (-1d) | 0.8d → 1.07d | 0% → 100% | 2.13d → none |  | baseline start none → 2020-04-06; baseline finish none → 2020-04-07 |
| 38 | Revisión del diagrama UML | 2020-04-08 11:30 → 2020-04-07 A (-1d) | 2020-04-08 12:30 → 2020-04-07 A (-1d) |  | 0% → 100% | 2.67d → none | 36, 47 → 31, 42 | baseline start none → 2020-04-06; baseline finish none → 2020-04-07 |
| 39 | Establecimiento de librerias | 2020-04-08 12:30 → 2020-04-07 A (-1d) | 2020-04-09 09:30 → 2020-04-08 A (-1d) |  | 0% → 100% | 2.2d → none |  | baseline start none → 2020-04-07; baseline finish none → 2020-04-07 |
| 40 | Comunicacion con la capa de persistencia | 2020-04-08 11:30 → 2020-04-07 A (-1d) | 2020-04-09 10:00 → 2020-04-08 A (-1d) | 6h → 8h | 0% → 100% | 2.13d → none | 36, 47 → 31, 42 | baseline start none → 2020-04-06; baseline finish none → 2020-04-07 |
| 41 | Diseño de la capa lógica | 2020-04-09 10:00 → 2020-04-08 A (-1d) | 2020-04-09 10:00 → 2020-04-08 A (-1d) |  | 0% → 100% | 2.27d → none |  | baseline start none → 2020-04-07; baseline finish none → 2020-04-07 |
| 42 | **Capa de persistencia** | 2020-04-07 09:00 → 2020-04-06 A (-1d) | 2020-04-08 11:30 → 2020-04-07 A (-1d) |  | 0% → 100% | 2.13d → none | 36 → 31 | baseline start none → 2020-04-03; baseline finish none → 2020-04-06 |
| 43 | Diseño de las tablas y relaciones | 2020-04-07 09:00 → 2020-04-06 A (-1d) | 2020-04-07 15:00 → 2020-04-06 A (-1d) |  | 0% → 100% | 2.67d → none |  | baseline start none → 2020-04-03; baseline finish none → 2020-04-03 |
| 44 | Establecimiento de usuarios y permisos | 2020-04-07 09:00 → 2020-04-06 A (-1d) | 2020-04-07 10:00 → 2020-04-06 A (-1d) |  | 0% → 100% | 3.33d → none |  | baseline start none → 2020-04-03; baseline finish none → 2020-04-03 |
| 45 | Diseño de la base de datos | 2020-04-07 09:00 → 2020-04-06 A (-1d) | 2020-04-08 11:30 → 2020-04-07 A (-1d) |  | 0% → 100% | 2.13d → none |  | baseline start none → 2020-04-03; baseline finish none → 2020-04-06 |
| 46 | Comunicación con la capa lógica | 2020-04-07 09:00 → 2020-04-06 A (-1d) | 2020-04-07 14:00 → 2020-04-06 A (-1d) |  | 0% → 100% | 2.8d → none |  | baseline start none → 2020-04-03; baseline finish none → 2020-04-03 |
| 47 | Diseño de la capa de persistencia | 2020-04-08 11:30 → 2020-04-07 A (-1d) | 2020-04-08 11:30 → 2020-04-07 A (-1d) |  | 0% → 100% | 2.2d → none |  | baseline start none → 2020-04-06; baseline finish none → 2020-04-06 |
| 48 | **Implementación** | 2020-04-09 10:00 → 2020-04-08 (-1d) | 2020-05-11 09:48 → 2020-04-30 (-11d) | 20.97d → 16.03d |  | 0d → 0.07d |  | baseline start none → 2020-04-07; baseline finish none → 2020-04-24 |
| 49 | **Capa de presentación** | 2020-04-09 10:00 → 2020-04-08 (-1d) | 2020-04-21 12:00 → 2020-04-16 (-5d) | 8.27d → 5.85d |  | 2.13d → 0.07d |  | baseline start none → 2020-04-07; baseline finish none → 2020-04-13 |
| 50 | Interfaz gráfica de la aplicación | 2020-04-09 10:00 → 2020-04-08 (-1d) | 2020-04-10 16:30 → 2020-04-09 (-1d) | 14h → 8.17h |  | 8.53d → 0.07d | 41 → 37 | resources programador4 → programador1; programador2; programador3; baseline start none → 2020-04-07; baseline finish none → 2020-04-08 |
| 51 | Interfaz versión web | 2020-04-09 10:00 → 2020-04-09 | 2020-04-21 12:00 → 2020-04-14 (-7d) | 49h → 22.07h |  | 2.13d → 0.54d | 41 → 50 | resources programador2; programador3 → programador2; programador3; programador1; baseline start none → 2020-04-08; baseline finish none → 2020-04-10 |
| 52 | Implementar la conexión con la capa lógica | 2020-04-13 09:00 → 2020-04-14 (+1d) | 2020-04-15 14:00 → 2020-04-16 (+1d) | 20h → 10.17h |  | 5.87d → 0.07d | 41 → 50, 51 | resources programador4 → programador1; programador2; programador3; baseline start none → 2020-04-10; baseline finish none → 2020-04-13 |
| 53 | Implementación de la capa de presentación | 2020-04-21 12:00 → 2020-04-16 (-5d) | 2020-04-21 12:00 → 2020-04-16 (-5d) |  |  | 2.13d → 0.07d |  | baseline start none → 2020-04-13; baseline finish none → 2020-04-13 |
| 54 | **Capa de lógica** | 2020-04-21 12:00 → 2020-04-16 (-5d) | 2020-05-05 15:30 → 2020-04-23 (-12d) | 9.47d → 5.17d |  | 0.13d → 0.07d | 53 → 49 | baseline start none → 2020-04-13; baseline finish none → 2020-04-20 |
| 55 | Acceso a la capa de persistencia | 2020-04-21 12:00 → 2020-04-16 (-5d) | 2020-04-28 12:00 → 2020-04-22 (-6d) | 30.5h → 22.25h |  | 4.6d → 0.17d | 41 → 37 | resources programador2; programador3 → programador3; programador1; baseline start none → 2020-04-13; baseline finish none → 2020-04-17 |
| 56 | Implementar el diagrama UML | 2020-04-24 09:30 → 2020-04-16 (-8d) | 2020-05-05 15:30 → 2020-04-22 (-13d) |  |  | 0.13d → 0.07d | 41 → 37 | resources programador2; programador4 → programador2; baseline start none → 2020-04-13; baseline finish none → 2020-04-15 |
| 57 | Contruir servicios web | 2020-04-21 12:00 → 2020-04-22 (+1d) | 2020-04-30 15:30 → 2020-04-23 (-7d) | 56h → 8.81h |  | 2.13d → 0.07d | 41 → 55, 56 | resources programador4 → programador2; programador3; programador1; baseline start none → 2020-04-17; baseline finish none → 2020-04-20 |
| 58 | Implementación de la capa lógica | 2020-05-05 15:30 → 2020-04-23 (-12d) | 2020-05-05 15:30 → 2020-04-23 (-12d) |  |  | 0.33d → 0.67d |  | baseline start none → 2020-04-20; baseline finish none → 2020-04-20 |
| 59 | **Capa de persistencia** | 2020-05-05 15:30 → 2020-04-23 (-12d) | 2020-05-11 09:48 → 2020-04-30 (-11d) | 3.24d → 5d |  | 0d → 0.1d | 58 → 54 | baseline start none → 2020-04-20; baseline finish none → 2020-04-24 |
| 60 | Estructura de datos | 2020-05-05 15:30 → 2020-04-23 (-12d) | 2020-05-08 13:00 → 2020-04-30 (-8d) | 20h → 30.5h |  | 0.57d → 0.1d | 41 → 37 | resources programador1; programador2 → programador2; programador3; baseline start none → 2020-04-20; baseline finish none → 2020-04-23 |
| 61 | Lógica de los datos | 2020-05-05 15:30 → 2020-04-23 (-12d) | 2020-05-11 09:48 → 2020-04-29 (-12d) | 20.8h → 32h |  | 0d → 0.84d | 41 → 37 | resources programador3; programador4 → programador1; baseline start none → 2020-04-20; baseline finish none → 2020-04-24 |
| 62 | Implementación de la capa de persistencia | 2020-05-11 09:48 → 2020-04-30 (-11d) | 2020-05-11 09:48 → 2020-04-30 (-11d) |  |  | 0d → 0.03d |  | baseline start none → 2020-04-24; baseline finish none → 2020-04-24 |
| 63 | **Verificación y pruebas** | 2020-05-11 09:48 → 2020-04-30 (-11d) | 2020-05-26 09:48 → 2020-05-14 (-12d) | 11d → 9.1d |  | 0d → 0.1d |  | baseline start none → 2020-04-24; baseline finish none → 2020-05-11 |
| 64 | **Pruebas funcionales** | 2020-05-11 09:48 → 2020-04-30 (-11d) | 2020-05-12 14:48 → 2020-05-05 (-7d) |  |  | 0d → 0.1d |  | baseline start none → 2020-04-24; baseline finish none → 2020-04-27 |
| 65 | Pruebas unitarias | 2020-05-11 09:48 → 2020-04-30 (-11d) | 2020-05-12 14:48 → 2020-05-05 (-7d) |  |  | 0d → 0.1d | 53, 58, 62 → 49, 54, 59 | baseline start none → 2020-04-24; baseline finish none → 2020-04-27 |
| 66 | Acta de aprobación | 2020-05-12 14:48 → 2020-05-05 (-7d) | 2020-05-12 14:48 → 2020-05-05 (-7d) |  |  | 0d → 0.1d |  | baseline start none → 2020-04-27; baseline finish none → 2020-04-27 |
| 67 | **Pruebas de integración** | 2020-05-12 14:48 → 2020-05-05 (-7d) | 2020-05-19 12:48 → 2020-05-11 (-8d) |  |  | 0d → 0.1d |  | baseline start none → 2020-04-27; baseline finish none → 2020-05-05 |
| 68 | Pruebas de aplicación | 2020-05-12 14:48 → 2020-05-05 (-7d) | 2020-05-15 10:03 → 2020-05-07 (-8d) |  |  | 0d → 0.1d | 66 → 64 | baseline start none → 2020-04-27; baseline finish none → 2020-04-30 |
| 69 | Pruebas de web | 2020-05-15 10:03 → 2020-05-07 (-8d) | 2020-05-19 12:48 → 2020-05-11 (-8d) |  |  | 0d → 0.1d |  | baseline start none → 2020-04-30; baseline finish none → 2020-05-05 |
| 70 | Acta de aprobación | 2020-05-19 12:48 → 2020-05-11 (-8d) | 2020-05-19 12:48 → 2020-05-11 (-8d) |  |  | 0d → 0.1d |  | baseline start none → 2020-05-05; baseline finish none → 2020-05-05 |
| 71 | **Pruebas de aceptación** | 2020-05-19 12:48 → 2020-05-11 (-8d) | 2020-05-20 16:03 → 2020-05-12 (-8d) | 1.43d → 0.96d |  | 0d → 0.1d |  | baseline start none → 2020-05-05; baseline finish none → 2020-05-06 |
| 72 | Pruebas del departamento de calidad | 2020-05-19 12:48 → 2020-05-11 (-8d) | 2020-05-20 16:03 → 2020-05-12 (-8d) | 10.75h → 7.17h |  | 0d → 0.1d | 70 → 67 | resources q&a; programador1 → q&a; programador1; programador2; baseline start none → 2020-05-05; baseline finish none → 2020-05-06 |

| ID | Task | Start | Finish | Duration | Total float | Predecessors | Other |
| --- | --- | --- | --- | --- | --- | --- | --- |
| 73 | Acta de aprobación | 2020-05-20 16:03 → 2020-05-12 (-8d) | 2020-05-20 16:03 → 2020-05-12 (-8d) |  | 3.57d → 2.52d |  | baseline start none → 2020-05-06; baseline finish none → 2020-05-06 |
| 74 | **Pruebas de estrés** | 2020-05-20 16:03 → 2020-05-12 (-8d) | 2020-05-26 09:48 → 2020-05-14 (-12d) | 3.17d → 1.75d | 0d → 0.1d |  | baseline start none → 2020-05-06; baseline finish none → 2020-05-11 |
| 75 | Base de datos | 2020-05-20 16:03 → 2020-05-12 (-8d) | 2020-05-21 14:33 → 2020-05-13 (-8d) | 6h → 4.13h | 0d → 0.05d |  | resources q&a; programador4 → q&a; programador1; programador3; programador2; baseline start none → 2020-05-06; baseline finish none → 2020-05-07 |
| 76 | Acceso al servidor | 2020-05-21 14:33 → 2020-05-13 (-8d) | 2020-05-22 12:25 → 2020-05-14 (-8d) | 5.38h → 5.2h | 0d → 0.05d |  | resources q&a; programador2 → q&a; programador1; programador3; programador2; baseline start none → 2020-05-07; baseline finish none → 2020-05-08 |
| 77 | Acceso a la web | 2020-05-22 12:25 → 2020-05-14 (-8d) | 2020-05-26 09:48 → 2020-05-14 (-12d) | 8.88h → 3.32h | 0d → 0.05d |  | resources q&a; programador3 → q&a; programador2; programador3; programador1; baseline start none → 2020-05-08; baseline finish none → 2020-05-11 |
| 78 | Acta de aprobación | 2020-05-26 09:48 → 2020-05-14 (-12d) | 2020-05-26 09:48 → 2020-05-14 (-12d) |  | 0d → 0.63d |  | baseline start none → 2020-05-11; baseline finish none → 2020-05-11 |
| 79 | **Despliegue e implantación** | 2020-04-10 09:00 → 2020-05-14 (+34d) | 2020-06-02 12:48 → 2020-05-19 (-14d) | 36.51d → 3.43d |  |  | resources Servidor → Servidor; Suscripción pago mongoDB; baseline start none → 2020-05-11; baseline finish none → 2020-05-14 |
| 80 | **Base de datos** | 2020-05-26 09:48 → 2020-05-14 (-12d) | 2020-05-26 14:48 → 2020-05-15 (-11d) | 0.67d → 0.66d |  |  | baseline start none → 2020-05-11; baseline finish none → 2020-05-11 |
| 81 | Poblar con datos | 2020-05-26 09:48 → 2020-05-14 (-12d) | 2020-05-26 14:48 → 2020-05-15 (-11d) | 5h → 3.33h |  | 73, 78 → 74, 71 | resources programador1 → programador1; programador2; programador3; baseline start none → 2020-05-11; baseline finish none → 2020-05-11 |
| 82 | Base de datos operativa | 2020-05-26 14:48 → 2020-05-15 (-11d) | 2020-05-26 14:48 → 2020-05-15 (-11d) |  |  |  | baseline start none → 2020-05-11; baseline finish none → 2020-05-11 |
| 83 | **Servidor web** | 2020-05-26 14:48 → 2020-05-15 (-11d) | 2020-05-28 12:48 → 2020-05-18 (-10d) | 1.73d → 1.31d |  |  | baseline start none → 2020-05-11; baseline finish none → 2020-05-12 |
| 84 | Implementación de servidores | 2020-05-26 14:48 → 2020-05-15 (-11d) | 2020-05-28 09:48 → 2020-05-18 (-10d) | 10h → 4.33h |  | 82 → 80 | resources programador2 → programador1; programador2; programador3; baseline start none → 2020-05-11; baseline finish none → 2020-05-12 |
| 85 | Comprar dominio | 2020-05-27 09:00 → 2020-05-15 (-12d) | 2020-05-27 10:00 → 2020-05-15 (-12d) | 1h → 0.5h | 1.37d → 1.24d | 82 → 80 | resources programador3 → jefe_de_proyecto; programador2; baseline start none → 2020-05-11; baseline finish none → 2020-05-11 |
| 86 | Conexión con servicios de estadísticas | 2020-05-28 09:48 → 2020-05-18 (-10d) | 2020-05-28 12:48 → 2020-05-18 (-10d) |  |  |  | resources programador4 → programador1; baseline start none → 2020-05-12; baseline finish none → 2020-05-12 |
| 87 | Servidor web operativo | 2020-05-28 12:48 → 2020-05-18 (-10d) | 2020-05-28 12:48 → 2020-05-18 (-10d) |  |  |  | baseline start none → 2020-05-12; baseline finish none → 2020-05-12 |
| 88 | **Aplicación** | 2020-05-28 12:48 → 2020-05-18 (-10d) | 2020-06-02 10:48 → 2020-05-19 (-14d) | 2.73d → 1.33d |  |  | baseline start none → 2020-05-12; baseline finish none → 2020-05-14 |
| 89 | Detección de dependencias | 2020-05-28 12:48 → 2020-05-18 (-10d) | 2020-05-29 10:18 → 2020-05-19 (-10d) |  |  | 87 → 83 | resources programador2 → programador1; baseline start none → 2020-05-12; baseline finish none → 2020-05-13 |
| 90 | Creación de contenedores | 2020-05-29 10:18 → 2020-05-19 (-10d) | 2020-06-01 12:48 → 2020-05-19 (-13d) | 10h → 5h |  |  | resources programador1 → programador1; programador2; baseline start none → 2020-05-13; baseline finish none → 2020-05-14 |
| 91 | Despliegue de contenedores | 2020-06-01 12:48 → 2020-05-19 (-13d) | 2020-06-02 10:48 → 2020-05-19 (-14d) |  |  | 90 → 90FF | resources programador3 → programador2; baseline start none → 2020-05-13; baseline finish none → 2020-05-14 |
| 92 | Aplicación desplegada | 2020-06-02 10:48 → 2020-05-19 (-14d) | 2020-06-02 10:48 → 2020-05-19 (-14d) |  |  |  | baseline start none → 2020-05-14; baseline finish none → 2020-05-14 |
| 93 | **Mantenimiento** | 2020-04-10 09:00 → 2020-05-19 (+39d) | 2020-06-02 12:48 → 2020-05-19 (-14d) | 36.51d → 0.13d |  |  | baseline start none → 2020-05-14; baseline finish none → 2020-05-14 |
| 94 | Gestion de control | 2020-06-02 10:48 → 2020-05-19 (-14d) | 2020-06-02 12:48 → 2020-05-19 (-14d) | 2h → 1h |  | 92 → 88 | resources programador1 → programador1; jefe_de_proyecto; baseline start none → 2020-05-14; baseline finish none → 2020-05-14 |
| 95 | Resumen de las reuniones, controles y actualizaciones | 2020-06-02 12:48 → 2020-05-19 (-14d) | 2020-06-02 12:48 → 2020-05-19 (-14d) |  |  | Reuniones del equipo de desarrollo 4, 94 → 94 | baseline start none → 2020-05-14; baseline finish none → 2020-05-14 |
